Schedule from MS Project, 2023-12-03 to 2024-07-07, status date 2023-12-19, 7 hours a day, costs in DA, A marks actual dates.

## Calendars

- Mon_Calendrier: Mon-Thu 08:00-12:00, 13:00-16:00; Fri-Sat off; Sun 08:00-12:00, 13:00-16:00. Exceptions (off unless hours are given): 2024-01-01 (jour de l'an), 2024-01-12 (jour de yenayer), 2024-05-01 to 2024-05-02 (fête du travail), 2024-07-05 (jour de l'indépendance).

## Resources

| Resource | Group | Rate | Cost per use |
| --- | --- | --- | --- |
| Imad | Chef de projet | 2500 |  |
| Yacine | Développer | 2000 |  |
| Houcine | Développer | 3000 |  |
| Abdellah | Concepteur | 3500 |  |
| Equipement de bureau | administrateur réseau |  | 9000 |
| logiciels et outils de test | Matériel |  | 4500 |

## Schedule

| ID | WBS | Task | Type | Duration | Start | Finish | Predecessors | Complete | Remaining | Actual start | Baseline start | Baseline finish | Baseline duration | Total slack | Constraint | Resources | Work | Actual work | Cost | Baseline cost | Actual cost |
| --- | --- | --- | --- | --- | --- | --- | --- | --- | --- | --- | --- | --- | --- | --- | --- | --- | --- | --- | --- | --- | --- |
| 1 | 1 | Début | milestone | 0d | 2023-12-03 | 2023-12-03 |  |  |  |  | 2023-12-03 | 2023-12-03 | 0d | 38d |  |  |  |  |  |  |  |
| 2 | 2 | **Planification et Analyse** |  | 4d | 2023-12-03 A | 2023-12-06 A |  | 100% |  |  | 2023-12-03 | 2023-12-06 | 4d |  |  |  |  |  |  |  |  |
| 3 | 2.1 | Définir les exigences du logiciel et sa faisabilité |  | 2d | 2023-12-03 A | 2023-12-04 A | 1 | 100% |  |  | 2023-12-03 | 2023-12-04 | 2d |  |  |  |  |  |  |  |  |
| 4 | 2.2 | Planifier le temps et les ressources |  | 2d | 2023-12-05 A | 2023-12-06 A | 1 | 100% |  |  | 2023-12-05 | 2023-12-06 | 2d |  |  |  |  |  |  |  |  |
| 5 | 3 | **Conception** |  | 15d | 2024-01-15 | 2024-02-04 |  | 90% | 1.5d | 2023-12-07 | 2023-12-07 | 2023-12-27 | 15d |  |  | Abdellah | 217h | 126h | 677,500 | 329,000 | 376,500 |
| 6 | 3.1 | Concevoir l'architecture du logiciel |  | 4d | 2023-12-07 A | 2023-12-12 A | 2 | 100% |  |  | 2023-12-07 | 2023-12-12 | 4d |  |  | Abdellah | 28h | 28h | 98,000 | 98,000 | 98,000 |
| 7 | 3.2 | Établir des spécifications fonctionnelles |  | 2d | 2023-12-13 A | 2023-12-14 A | 2 | 100% |  |  | 2023-12-13 | 2023-12-14 | 2d |  |  | Abdellah | 14h | 14h | 49,000 | 49,000 | 49,000 |
| 8 | 3.3 | Identification des technologies et outils |  | 4d | 2023-12-17 A | 2024-01-15 | 2 | 75% | 1d |  | 2023-12-17 | 2023-12-27 | 4d | 120d |  | Imad; Yacine; Houcine; Abdellah; Equipement de bureau | 70h | 56h | 163,000 | 182,000 | 131,500 |
| 9 | 4 | **Développement** |  | 42d | 2024-02-01 | 2024-03-31 |  |  |  |  | 2023-12-17 | 2024-01-03 | 13d |  |  |  | 189h |  | 455,000 | 2,252,500 |  |
| 10 | 4.1 | Créer une interface utilisateur (UI/UX) |  | 5d | 2024-02-01 | 2024-02-07 | 3 |  |  |  | 2023-12-17 | 2023-12-21 | 5d | 105d |  | Yacine | 35h |  | 70,000 |  |  |
| 11 | 4.2 | Programmer les fonctionnalités principales |  | 7d | 2024-02-01 | 2024-02-11 | 3 |  |  |  | 2023-12-17 | 2023-12-25 | 7d | 103d |  | Yacine; Houcine | 98h |  | 245,000 | 220,500 |  |
| 12 | 4.3 | Mettre en place une base de données |  | 4d | 2024-02-01 | 2024-02-06 |  |  |  |  | 2023-12-28 | 2024-01-03 | 4d | 106d |  | Houcine; Yacine | 56h |  | 140,000 | 2,032,000 |  |
| 13 | 5 | **Tests et Validation** |  | 12d | 2024-06-20 | 2024-07-07 |  |  |  |  | 2023-12-28 | 2024-01-15 | 12d |  |  | Imad | 84h |  | 210,000 | 185,500 |  |
| 14 | 5.1 | Réaliser des tests unitaires |  | 3d | 2024-06-20 | 2024-06-24 | 4 |  |  |  | 2023-12-28 | 2024-01-02 | 3d | 9d |  |  |  |  |  | 42,000 |  |
| 15 | 5.2 | Effectuer des tests d'intégration |  | 4d | 2024-06-20 | 2024-06-25 | 4 |  |  |  | 2024-01-03 | 2024-01-08 | 4d | 8d |  |  |  |  |  | 56,000 |  |
| 16 | 5.3 | Identifier et corriger les bogues |  | 5d | 2024-06-20 | 2024-06-26 | 4 |  |  |  | 2024-01-09 | 2024-01-15 | 5d | 7d |  |  |  |  |  | 87,500 |  |
| 17 | 6 | **Documentation** |  | 2d | 2024-02-05 | 2024-02-06 |  |  |  |  | 2023-12-26 | 2024-01-17 | 16d | 106d |  |  | 28h |  | 98,000 | 98,000 |  |
| 18 | 6.1 | Rédiger la documentation utilisateur |  | 2d | 2024-02-05 | 2024-02-06 | 5 |  |  |  | 2024-01-16 | 2024-01-17 | 2d | 106d |  | Abdellah | 14h |  | 49,000 | 49,000 |  |
| 19 | 6.2 | Rédiger la documentation technique |  | 2d | 2024-02-05 | 2024-02-06 | 5 |  |  |  | 2023-12-26 | 2023-12-27 | 2d | 106d |  | Abdellah | 14h |  | 49,000 | 49,000 |  |
| 20 | 7 | **Déploiement et Maintenance** |  | 3d | 2023-12-13 | 2023-12-17 |  |  |  |  | 2024-01-17 | 2024-01-24 | 6d | 142d |  |  |  |  |  | 10,546,000 |  |
| 21 | 7.1 | Déployer le logiciel sur les serveurs ou les appareils cibles |  | 3d | 2023-12-13 | 2023-12-17 | 6 |  |  |  | 2024-01-17 | 2024-01-21 | 3d | 142d |  |  |  |  |  | 10,546,000 |  |
| 22 | 7.2 | Assurer la formation des utilisateurs finaux |  | 2d | 2023-12-13 | 2023-12-14 | 6 |  |  |  | 2024-01-22 | 2024-01-23 | 2d | 143d |  |  |  |  |  |  |  |
| 23 | 7.3 | Surveiller les performances et la sécurité |  | 3d | 2023-12-13 | 2023-12-17 | 6 |  |  |  | 2024-01-22 | 2024-01-24 | 3d | 142d |  |  |  |  |  |  |  |
| 24 | 8 | Fin | milestone | 0d | 2024-06-30 | 2024-06-30 | 7 |  |  |  | 2024-01-24 | 2024-01-24 | 0d | 6d | start no earlier than 2024-06-30 |  |  |  |  |  |  |

Notes:
- 15: La correction des bogues est cruciale pour la fiabilité du logiciel, nécessitant une approche méthodique et proactive.~
